# 1

Schedule from MS Project, 2024-02-05 to 2025-02-25, costs in Br.

## Calendars

- Копия Стандартный: Mon-Fri 09:00-13:00, 14:00-18:00; Sat-Sun off. Exceptions (off unless hours are given): 2024-05-01, 2024-05-09.

## Resources

| Resource | Rate | Cost per use |
| --- | --- | --- |
| Архитектор |  | 550000 |
| МУП «Горгаз» |  | 700000 |
| МУП «Водоканал» |  | 500000 |
| АО «Водолей2 |  | 500000 |
| Рабочий1 | 10000 |  |
| Рабочий2 | 10000 |  |
| Рабочий3 | 10000 |  |
| Подсобник1 | 4000 |  |
| Подсобник2 | 4000 |  |
| Трактор |  | 70000 |
| Плотник1 | 150000 | 75000 |
| Плотник2 | 15000 | 75000 |
| АО «Неопласт» |  | 1200000 |
| Водопроводчик1 | 8000 |  |
| Водопроводчик2 | 8000 |  |
| Электрик | 10000 |  |
| АО «Газовик» |  | 250000 |
| ООО «Потолки» |  | 1500000 |
| Песок | 5000 |  |
| Щебень | 6000 |  |
| Кирпич | 70 |  |
| Брус |  | 250000 |
| Доска обрезная | 70000 |  |
| Доска необрезная | 50000 |  |
| Шифер |  | 400000 |
| Электропровод |  | 150000 |
| Электросчетчик |  | 50000 |
| Труба водопроводная |  | 350000 |
| Труба канализационная |  | 300000 |
| Штукатурка |  | 1500000 |
| Потолок | 1500 |  |
| Окно | 100000 |  |
| Дверь наружная |  | 200000 |
| Труба отопительная |  | 200000 |
| Котел |  | 400000 |
| Печь газовая |  | 200000 |
| Ванна | 450000 |  |
| Унитаз компакт | 200000 |  |
| Раковина | 160000 |  |
| Кран | 70000 |  |
| Паркет | 5500 |  |
| Труба газовая |  | 500000 |
| Дверь внутренняя | 90000 |  |
| Доставка |  |  |
| Цемент | 780000 | 250000 |

## Schedule

| ID | WBS | Task | Type | Duration | Start | Finish | Predecessors | Total slack | Free slack | Constraint | Resources | Work | Cost |
| --- | --- | --- | --- | --- | --- | --- | --- | --- | --- | --- | --- | --- | --- |
| 1 | 1 | 1.Начало проекта | milestone | 0d | 2024-02-06 | 2024-02-06 | 3 | 296d |  | start no earlier than 2024-02-06 |  |  |  |
| 2 | 2 | **2. Утверждение проектов** |  | 77d | 2024-02-05 | 2024-05-23 |  | 1d |  |  |  | 1800h | 2,250,000 |
| 3 | 2.1 | 3. Начало утверждения проектов |  | 1d | 2024-02-05 | 2024-02-05 |  | 2d | 0d |  |  |  |  |
| 4 | 2.2 | 4. Утверждение проекта на строительство |  | 90d | 2024-02-06 | 2024-05-23 | 3 | 1d | 0d |  | Архитектор | 720h | 550,000 |
| 5 | 2.3 | 5. Утверждение проекта на газ |  | 60d | 2024-02-06 | 2024-04-16 | 3 | 26d | 25d |  | МУП «Горгаз» | 480h | 700,000 |
| 6 | 2.4 | 6. Утверждение проекта на водопровод и каналиизацию |  | 30d | 2024-02-06 | 2024-03-12 | 3 | 51d | 50d |  | МУП «Водоканал» | 240h | 500,000 |
| 7 | 2.5 | 7. Утверждение проекта на отопление |  | 45d | 2024-02-06 | 2024-03-29 | 3 | 38d | 37d |  | АО «Водолей2 | 360h | 500,000 |
| 8 | 2.6 | 8. Проекты утверждены | milestone | 0d | 2024-05-23 | 2024-05-23 | 4, 5, 6, 7 | 1d | 0d |  |  |  |  |
| 9 | 3 | **9. Строительство фундамента** |  | 47d | 2024-05-24 | 2024-07-29 |  | 0d |  |  |  | 680h | 5,721,000 |
| 10 | 3.1 | 10. Начало закладки фундамента |  | 2d | 2024-05-24 | 2024-05-27 | 8 | 1d | 0d |  |  |  |  |
| 11 | 3.2 | 11. Рытье траншей |  | 10d | 2024-05-28 | 2024-06-07 | 10 | 0d |  |  | Подсобник1; Подсобник2; Рабочий1; Рабочий2; Рабочий3; Трактор | 480h | 3,110,000 |
| 12 | 3.3 | 12. Заливка фундамента |  | 5d | 2024-06-08 | 2024-06-14 | 11 | 0d |  |  | Доска необрезная; Доставка [0.1%]; Песок; Подсобник1; Подсобник2; Рабочий1; Рабочий2; Рабочий3; Цемент; Щебень | 200h | 2,611,000 |
| 13 | 3.4 | 13. Фундамент завершен |  | 1d | 2024-07-29 | 2024-07-29 | 12FS+30d | 0d |  |  |  |  |  |
| 14 | 4 | **14. Каркас и крыша** |  | 106d | 2024-07-30 | 2024-12-24 |  | 0d |  |  |  | 3616h | 72,275,070 |
| 15 | 4.1 | 15. Начало каркаса |  | 1d | 2024-07-30 | 2024-07-30 | 13 | 0d |  |  |  |  |  |
| 16 | 4.2 | 16. Кладка стен |  | 60d | 2024-07-31 | 2024-10-22 | 15 | 0d |  |  | Доставка [0.1%]; Кирпич; Песок; Подсобник1; Подсобник2; Рабочий1; Рабочий2; Рабочий3; Цемент | 2400h | 19,275,070 |
| 17 | 4.3 | 17. Перекрытие стен |  | 15d | 2024-10-23 | 2024-11-12 | 16 | 0d |  |  | Брус; Доска обрезная; Доставка [0.1%]; Подсобник1; Подсобник2; Рабочий1; Рабочий2; Рабочий3 | 600h | 4,880,000 |
| 18 | 4.4 | 18. Установка крыши |  | 30d | 2024-11-13 | 2024-12-24 | 17 | 0d |  |  | Доска необрезная; Доставка [0.1%]; Плотник1; Плотник2 | 480h | 39,800,000 |
| 19 | 4.5 | 19. Установка наружных дверей и окон |  | 7d | 2024-11-13 | 2024-11-20 | 17 | 24d |  |  | АО «Неопласт»; Дверь наружная; Окно | 56h | 1,500,000 |
| 20 | 4.6 | 20. Установка полов |  | 5d | 2024-11-13 | 2024-11-19 | 17 | 25d |  |  | Доска обрезная; Доставка [0.1%]; Плотник1; Плотник2 | 80h | 6,820,000 |
| 21 | 4.7 | 21. Каркас готов | milestone | 0d | 2024-12-24 | 2024-12-24 | 18, 19, 20 | 0d |  |  |  |  |  |
| 22 | 5 | **22. Коммуникации** |  | 10d? | 2024-12-25 | 2025-01-07 |  | 0d |  |  |  | 240h | 3,280,000 |
| 23 | 5.1 | 23. Начало установки коммуникаций |  | 1d | 2024-12-25 | 2024-12-25 | 21 | 0d |  |  |  |  |  |
| 24 | 5.2 | 24. Проведение и подключение водопровода и канализации |  | 10d | 2024-12-26 | 2025-01-06 | 23 | 0d |  |  | Водопроводчик1; Водопроводчик2; Труба водопроводная; Труба канализационная | 160h | 1,930,000 |
| 25 | 5.3 | 25. Установка и подключение электропроводки |  | 5d | 2024-12-26 | 2024-12-31 | 23 | 4d |  |  | Электрик; Электропровод; Электросчетчик | 40h | 600,000 |
| 26 | 5.4 | 26. Установка и подключение газовых коммуникаций |  | 5d | 2024-12-26 | 2024-12-31 | 23 | 4d |  |  | АО «Газовик»; Труба газовая | 40h | 750,000 |
| 27 | 5.5 | 27. Коммуникации готовы |  | 1d? | 2025-01-07 | 2025-01-07 | 24, 25, 26 | 0d |  |  |  |  |  |

| ID | WBS | Task | Type | Duration | Start | Finish | Predecessors | Total slack | Constraint | Resources | Work | Cost |
| --- | --- | --- | --- | --- | --- | --- | --- | --- | --- | --- | --- | --- |
| 28 | 6 | **28. Внутренняя отделка** |  | 35d | 2025-01-07 | 2025-02-25 |  | 0d |  |  | 1160h | 25,519,000 |
| 29 | 6.1 | 29. Начало отделки | milestone | 0d | 2025-01-07 | 2025-01-07 | 27 | 0d |  |  |  |  |
| 30 | 6.2 | 30. Внутренние двери |  | 10d | 2025-01-08 | 2025-01-21 | 29 | 0d |  | Дверь внутренняя; Доставка [0.1%]; Плотник1; Плотник2 | 160h | 13,440,000 |
| 31 | 6.3 | 31. Навесные потолки |  | 5d | 2025-01-22 | 2025-01-27 | 30 | 4d |  | ООО «Потолки»; Потолок | 40h | 1,501,500 |
| 32 | 6.4 | 32. Отделка стен |  | 3d | 2025-02-05 | 2025-02-07 | 30 | 0d | as late as possible | Подсобник1; Подсобник2; Рабочий1; Рабочий2; Рабочий3; Штукатурка | 120h | 2,412,000 |
| 33 | 6.5 | 33. Монтаж отопления |  | 10d | 2025-01-22 | 2025-02-01 | 30 | 0d |  | Водопроводчик1; Водопроводчик2; Труба отопительная | 160h | 1,480,000 |
| 34 | 6.6 | 34. Установка оборудования, приборов, сантехники |  | 5d | 2025-02-03 | 2025-02-07 | 31, 33 | 0d |  | Ванна; Водопроводчик1; Водопроводчик2; Котел; Кран; Печь газовая; Раковина; Унитаз компакт | 80h | 2,120,000 |
| 35 | 6.7 | 35. Настил полов |  | 15d | 2025-02-08 | 2025-02-25 | 32, 34 | 0d |  | Паркет; Подсобник1; Подсобник2; Рабочий1; Рабочий2; Рабочий3 | 600h | 4,565,500 |
| 36 | 6.8 | 36. Конец отделки | milestone | 0d | 2025-02-25 | 2025-02-25 | 35 | 0d |  |  |  |  |
| 37 | 6.9 | 37. Конец проекта | milestone | 0d | 2025-02-25 | 2025-02-25 | 36 | 0d |  |  |  |  |
