# Sheibak_Chagan_автоматическое_выравнивание

Schedule from MS Project, 2024-02-20 to 2024-05-17, costs in ₽, A marks actual dates.

## Calendars

- Стандартный: Mon-Fri 09:00-13:00, 14:00-18:00; Sat-Sun off.

## Resources

| Resource | Unit | Rate | Cost per use |
| --- | --- | --- | --- |
| Слесарь-водопроводчик |  | 1250 | 20000 |
| Штукатур |  | 1000 |  |
| Подсобник |  | 500 |  |
| Плиточник |  | 1875 |  |
| Плотник |  | 1875 |  |
| АО "Светлый потолок" |  | 1250 |  |
| Унитаз-компакт | шт | 150000 |  |
| Ванна | шт | 350000 |  |
| Раковина | шт | 250000 |  |
| Смеситель с душем | шт | 100000 |  |
| Плитка | м2 | 10000 |  |
| Панель | шт | 5000 |  |
| Обои | рул | 15000 |  |
| Навесной потолок |  |  | 700000 |
| Паркет | м2 | 15000 |  |
| Доставка |  |  |  |

## Schedule

| ID | WBS | Task | Type | Duration | Start | Finish | Predecessors | Complete | Remaining | Baseline start | Baseline finish | Baseline duration | Total slack | Free slack | Resources | Work | Actual work | Cost | Baseline cost | Actual cost |
| --- | --- | --- | --- | --- | --- | --- | --- | --- | --- | --- | --- | --- | --- | --- | --- | --- | --- | --- | --- | --- |
| 1 | 1 | Начало проекта |  | 2d | 2024-02-26 | 2024-02-27 | 3 |  |  | 2024-02-26 | 2024-02-27 | 2d | 35d | 0d |  |  |  |  |  |  |
| 2 | 2 | **Выравнивание стен** |  | 15d | 2024-02-20 | 2024-03-11 |  |  |  | 2024-02-20 | 2024-03-11 | 15d | 25d |  |  | 120h |  | 120,000 | 120,000 |  |
| 3 | 2.1 | Стены в спальне |  | 4d | 2024-02-20 | 2024-02-23 |  |  |  | 2024-02-20 | 2024-02-23 | 4d | 25d | 0d | Штукатур | 32h |  | 32,000 | 32,000 |  |
| 4 | 2.2 | Стены в гостиной |  | 4d | 2024-02-26 | 2024-02-29 | 3 |  |  | 2024-02-26 | 2024-02-29 | 4d | 25d | 0d | Штукатур | 32h |  | 32,000 | 32,000 |  |
| 5 | 2.3 | Стены в кухне |  | 3d | 2024-03-01 | 2024-03-05 | 4 |  |  | 2024-03-01 | 2024-03-05 | 3d | 25d | 0d | Штукатур | 24h |  | 24,000 | 24,000 |  |
| 6 | 2.4 | Стены в прихожей |  | 4d | 2024-03-06 | 2024-03-11 | 5 |  |  | 2024-03-06 | 2024-03-11 | 4d | 25d | 0d | Штукатур | 32h |  | 32,000 | 32,000 |  |
| 7 | 2.5 | Выравнивание стен завершено | milestone | 0d | 2024-03-11 | 2024-03-11 | 6 |  |  | 2024-03-11 | 2024-03-11 | 0d | 25d | 0d |  |  |  |  |  |  |
| 8 | 3 | **Санузел** |  | 16d | 2024-03-06 | 2024-03-27 |  |  |  | 2024-03-06 | 2024-03-27 | 16d | 37d |  |  | 96h |  | 487,000 | 487,000 |  |
| 9 | 3.1 | Снятие штукатурки в санузле |  | 5d | 2024-03-06 | 2024-03-12 | 1 |  |  | 2024-03-06 | 2024-03-12 | 5d | 37d | 0d | Подсобник | 24h |  | 12,000 | 12,000 |  |
| 10 | 3.2 | Отделка стен санузла |  | 4d | 2024-03-13 | 2024-03-18 | 9 |  |  | 2024-03-13 | 2024-03-18 | 4d | 37d | 0d | Плиточник; Плитка [10 м2] | 32h |  | 160,000 | 160,000 |  |
| 11 | 3.3 | Отделка потолка санузла |  | 2d | 2024-03-19 | 2024-03-20 | 10 |  |  | 2024-03-19 | 2024-03-20 | 2d | 37d | 2d | Плиточник; Панель [5 шт] | 16h |  | 55,000 | 55,000 |  |
| 12 | 3.4 | Отделка пола санузла |  | 2d | 2024-03-25 | 2024-03-26 | 11 |  |  | 2024-03-25 | 2024-03-26 | 2d | 37d | 0d | Плиточник; Плитка [5 м2] | 16h |  | 80,000 | 80,000 |  |
| 13 | 3.5 | Установка сантехнического оборудования |  | 1d | 2024-03-27 | 2024-03-27 | 12 |  |  | 2024-03-27 | 2024-03-27 | 1d | 37d | 0d | Слесарь-водопроводчик; Унитаз-компакт [1 шт] | 8h |  | 180,000 | 180,000 |  |
| 14 | 3.6 | Ремонт санузла завершен | milestone | 0d | 2024-03-27 | 2024-03-27 | 13 |  |  | 2024-03-27 | 2024-03-27 | 0d | 37d |  |  |  |  |  |  |  |
| 15 | 4 | **Ванная** |  | 25d | 2024-02-28 | 2024-04-02 |  |  |  | 2024-02-28 | 2024-04-02 | 25d | 33d |  |  | 104h |  | 1,067,000 | 1,067,000 |  |
| 16 | 4.1 | Снятие штукатурки в ванной |  | 5d | 2024-02-28 | 2024-03-05 | 1 |  |  | 2024-02-28 | 2024-03-05 | 5d | 35d | 0d | Подсобник | 24h |  | 12,000 | 12,000 |  |
| 17 | 4.2 | Отделка стен в ванной |  | 5d | 2024-03-06 | 2024-03-12 | 16 |  |  | 2024-03-06 | 2024-03-12 | 5d | 35d | 0d | Плиточник; Плитка [10 м2] | 40h |  | 175,000 | 175,000 |  |
| 18 | 4.3 | Отделка потолка в ванной |  | 2d | 2024-03-21 | 2024-03-22 | 17 |  |  | 2024-03-21 | 2024-03-22 | 2d | 35d | 0d | Плиточник; Панель [6 шт] | 16h |  | 60,000 | 60,000 |  |
| 19 | 4.4 | Отделка пола в ванной |  | 2d | 2024-03-29 | 2024-04-01 | 18 |  |  | 2024-03-29 | 2024-04-01 | 2d | 33d | 0d | Плитка [6 м2]; Плиточник | 16h |  | 90,000 | 90,000 |  |
| 20 | 4.5 | Установка сантехники |  | 1d | 2024-04-02 | 2024-04-02 | 19 |  |  | 2024-04-02 | 2024-04-02 | 1d | 33d | 0d | Слесарь-водопроводчик; Ванна [1 шт]; Смеситель с душем [1 шт]; Раковина [1 шт] | 8h |  | 730,000 | 730,000 |  |
| 21 | 4.6 | Ремонт ванной завершен | milestone | 0d | 2024-04-02 | 2024-04-02 | 20 |  |  | 2024-04-02 | 2024-04-02 | 0d | 33d |  |  |  |  |  |  |  |
| 22 | 5 | **Отделка стен** |  | 23d | 2024-04-03 A | 2024-05-03 |  | 99% | 0d | 2024-04-03 | 2024-05-03 | 23d | 10d |  |  | 272h | 272h | 764,000 | 764,000 | 764,000 |
| 23 | 5.1 | Отделка стен в спальне |  | 5d | 2024-04-03 A | 2024-04-09 A | 7, 14, 21 | 100% |  | 2024-04-03 | 2024-04-09 | 5d |  |  | Штукатур; Обои [8 рул] | 40h | 40h | 160,000 | 160,000 | 160,000 |
| 24 | 5.2 | Отделка стен в гостинной |  | 7d | 2024-04-10 A | 2024-04-18 A | 23 | 100% |  | 2024-04-10 | 2024-04-18 | 7d |  |  | Штукатур; Обои [8 рул] | 56h | 56h | 176,000 | 176,000 | 176,000 |
| 25 | 5.3 | Отделка стен в кухне |  | 5d | 2024-04-19 A | 2024-04-25 A | 24 | 100% |  | 2024-04-19 | 2024-04-25 | 5d |  |  | Штукатур; Плитка [5 м2]; Плиточник; Панель [10 шт] | 80h | 80h | 215,000 | 215,000 | 215,000 |
| 26 | 5.4 | Отделка стен в прихожей |  | 6d | 2024-04-26 A | 2024-05-03 A | 25 | 100% |  | 2024-04-26 | 2024-05-03 | 6d |  |  | Штукатур; Панель [15 шт]; Плиточник | 96h | 96h | 213,000 | 213,000 | 213,000 |
| 27 | 5.5 | Отделка стен завершена | milestone | 0d | 2024-05-03 | 2024-05-03 | 26 |  |  | 2024-05-03 | 2024-05-03 | 0d | 10d |  |  |  |  |  |  |  |

| ID | WBS | Task | Type | Duration | Start | Finish | Predecessors | Baseline start | Baseline finish | Baseline duration | Total slack | Free slack | Resources | Work | Cost | Baseline cost |
| --- | --- | --- | --- | --- | --- | --- | --- | --- | --- | --- | --- | --- | --- | --- | --- | --- |
| 28 | 6 | **Потолки** |  | 41d | 2024-03-12 | 2024-05-07 |  | 2024-03-12 | 2024-05-07 | 41d | 8d |  |  | 80h | 840,000 | 840,000 |
| 29 | 6.1 | Замер |  | 2d | 2024-03-12 | 2024-03-13 | 7 | 2024-03-12 | 2024-03-13 | 2d | 25d | 0d | АО "Светлый потолок" | 16h | 20,000 | 20,000 |
| 30 | 6.2 | Заказ и оплата потолков |  | 2d | 2024-03-14 | 2024-03-15 | 29 | 2024-03-14 | 2024-03-15 | 2d | 25d | 7d | Навесной потолок |  | 700,000 | 700,000 |
| 31 | 6.3 | Навесной потолок в спальне |  | 2d | 2024-04-10 | 2024-04-11 | 23, 30FS+10d | 2024-04-10 | 2024-04-11 | 2d | 20d | 0d | АО "Светлый потолок" | 16h | 20,000 | 20,000 |
| 32 | 6.4 | Навесной потолок в гостиной |  | 2d | 2024-04-19 | 2024-04-22 | 24, 30FS+10d | 2024-04-19 | 2024-04-22 | 2d | 13d | 0d | АО "Светлый потолок" | 16h | 20,000 | 20,000 |
| 33 | 6.5 | Панельный потолок в кухне |  | 2d | 2024-05-06 | 2024-05-07 | 25, 30 | 2024-05-06 | 2024-05-07 | 2d | 5d | 0d | Плиточник; Панель [6 шт] | 16h | 60,000 | 60,000 |
| 34 | 6.6 | Навесной потолок в прихожей |  | 2d | 2024-05-06 | 2024-05-07 | 26, 30FS+10d | 2024-05-06 | 2024-05-07 | 2d | 0d |  | АО "Светлый потолок" | 16h | 20,000 | 20,000 |
| 35 | 6.7 | Монтаж потолков завершен | milestone | 0d | 2024-05-07 | 2024-05-07 | 31, 32, 33, 34 | 2024-05-07 | 2024-05-07 | 0d | 8d |  |  |  |  |  |
| 36 | 7 | **Полы** |  | 26d | 2024-04-12 | 2024-05-17 |  | 2024-04-12 | 2024-05-17 | 26d | 0d |  |  | 160h | 1,275,000 | 1,275,000 |
| 37 | 7.1 | Отделка полов в спальне |  | 6d | 2024-04-12 | 2024-04-19 | 31 | 2024-04-12 | 2024-04-19 | 6d | 20d |  | Паркет [20 м2]; Плотник | 48h | 390,000 | 390,000 |
| 38 | 7.2 | Отделка полов в гостиной |  | 6d | 2024-04-23 | 2024-04-30 | 32 | 2024-04-23 | 2024-04-30 | 6d | 13d |  | Плотник; Паркет [20 м2] | 48h | 390,000 | 390,000 |
| 39 | 7.3 | Отделка полов в кухне |  | 3d | 2024-05-08 | 2024-05-10 | 33 | 2024-05-08 | 2024-05-10 | 3d | 5d |  | Плотник; Паркет [10 м2] | 24h | 195,000 | 195,000 |
| 40 | 7.4 | Отделка полов в прихожей |  | 5d | 2024-05-13 | 2024-05-17 | 34 | 2024-05-13 | 2024-05-17 | 5d | 0d |  | Паркет [15 м2]; Плотник | 40h | 300,000 | 300,000 |
| 41 | 7.5 | Отделка полов завершена | milestone | 0d | 2024-05-17 | 2024-05-17 | 37, 38, 39, 40 | 2024-05-17 | 2024-05-17 | 0d | 0d |  |  |  |  |  |
| 42 | 7.6 | Конец проекта | milestone | 0d | 2024-05-17 | 2024-05-17 | 41 | 2024-05-17 | 2024-05-17 | 0d | 0d |  |  |  |  |  |
