# Внедрение бухгалтерской системы

Schedule from MS Project, 2024-02-12 to 2024-09-27.

## Calendars

- 6 рабочих дней по 6 часов + праздничные дни: Mon-Sat 09:00-15:00; Sun off. Exceptions (off unless hours are given): 2024-03-08 (recurring), 2024-05-01, 2024-05-09, 2024-05-13 to 2024-05-14, 2024-07-03.

## Resources

| Resource | Rate | Cost per use |
| --- | --- | --- |
| Главбух | 5625 | 300000 |
| Администратор | 4375 | 400000 |
| Программист | 3750 | 500000 |
| Техник | 2500 |  |
| Бухгалтер мат. Учёта1 | 2500 |  |
| Бухгалтер мат. Учёта2 | 2500 |  |
| Бухгалтер учёта ОС и НМА | 2500 |  |
| Бухгалтер учёта ОС | 2500 |  |
| Бухгалтер учёта реализации | 2500 |  |
| Бухгалтер производственного учёта | 2500 |  |
| Компьютер | 1500000 |  |
| Сервер | 150000 |  |
| Принтер | 170000 |  |
| МФУ |  |  |
| Сетевой кабель | 30000 | 150000 |
| Сетевой концентратор |  |  |
| Панель |  | 100000 |
| Разъёмы и розетки |  | 150000 |
| Бухгалтерская система |  | 1000000 |
| Офисный пакет |  | 700000 |
| ОС рабочей станции |  | 600000 |
| Серверная ОС |  | 300000 |
| Интернет |  |  |
| Междугородние переговоры |  |  |

## Schedule

| ID | WBS | Task | Type | Duration | Start | Finish | Predecessors | Total slack | Free slack |
| --- | --- | --- | --- | --- | --- | --- | --- | --- | --- |
| 1 | 1 | Начало проекта | milestone | 0d | 2024-02-12 | 2024-02-12 |  | 0d |  |
| 2 | 2 | **Выбор системы** |  | 16d | 2024-02-12 | 2024-03-07 |  | 0d |  |
| 3 | 2.1 | Изучение рынка бухгалтерских систем |  | 7d | 2024-02-12 | 2024-02-22 | 1 | 0d |  |
| 4 | 2.2 | Составление требований к бухгалтерским системам |  | 7d | 2024-02-12 | 2024-02-22 | 1 | 0d |  |
| 5 | 2.3 | Консультации с фирмами-разработчиками |  | 7d | 2024-02-22 | 2024-03-04 | 3, 4 | 0d |  |
| 6 | 2.4 | Принятие окончательного решения |  | 2d | 2024-03-04 | 2024-03-07 | 5 | 0d |  |
| 7 | 2.5 | Выбор завершен | milestone | 0d | 2024-03-07 | 2024-03-07 | 6 | 0d |  |
| 8 | 3 | **Приобретение программного обеспечения** |  | 22d | 2024-03-07 | 2024-04-11 |  | 105d |  |
| 9 | 3.1 | Заключение договоров |  | 6d | 2024-03-07 | 2024-03-18 | 2 | 105d | 0d |
| 10 | 3.2 | Оплата за ПО |  | 2d | 2024-03-18 | 2024-03-20 | 9 | 105d | 0d |
| 11 | 3.3 | Оформление ПО на баланс |  | 3d | 2024-04-06 | 2024-04-11 | 10FS+11d | 105d | 0d |
| 12 | 3.4 | Приобретение ПО завершено | milestone | 0d | 2024-04-11 | 2024-04-11 | 11 | 105d |  |
| 13 | 4 | **Приобретение компьютеров и сетевого оборудования** |  | 29d | 2024-03-07 | 2024-04-22 |  | 0d |  |
| 14 | 4.1 | Сбор информации о поставщиках и предложениях |  | 7d | 2024-03-07 | 2024-03-19 | 7 | 0d |  |
| 15 | 4.2 | Анализ и выбор поставщика |  | 5d | 2024-03-19 | 2024-03-27 | 14 | 0d |  |
| 16 | 4.3 | Заключение договоров |  | 5d | 2024-03-27 | 2024-04-03 | 15 | 0d |  |
| 17 | 4.4 | Оплата за оборудование |  | 2d | 2024-04-04 | 2024-04-06 | 16 | 0d |  |
| 18 | 4.5 | Оформление оборудования на баланс |  | 3d | 2024-04-06 | 2024-04-11 | 17 | 0d |  |
| 19 | 4.6 | Приобретение оборудования завершено | milestone | 0d | 2024-04-22 | 2024-04-22 | 18FS+7d | 0d |  |
| 20 | 5 | **Монтаж локальной сети** |  | 15d | 2024-04-23 | 2024-05-20 |  | 0d |  |
| 21 | 5.1 | Установка компьютеров на рабочих местах |  | 3d | 2024-04-23 | 2024-04-26 | 19 | 7d |  |
| 22 | 5.2 | Монтаж кабеля |  | 10d | 2024-04-23 | 2024-05-10 | 19 | 0d |  |
| 23 | 5.3 | Монтаж сетевых устройств |  | 10d | 2024-04-23 | 2024-05-10 | 19 | 0d |  |
| 24 | 5.4 | Подключение кабеля к компьютерам и сетевым устройствам |  | 5d | 2024-05-10 | 2024-05-20 | 21, 22, 23 | 0d |  |
| 25 | 5.5 | Монтаж завершён | milestone | 0d | 2024-05-20 | 2024-05-20 | 24 | 0d |  |

| ID | WBS | Task | Type | Duration | Start | Finish | Predecessors | Total slack |
| --- | --- | --- | --- | --- | --- | --- | --- | --- |
| 26 | 6 | **Установка ПО на компьютеры** |  | 17d | 2024-05-21 | 2024-06-15 |  | 0d |
| 27 | 6.1 | Установка сервера |  | 5d | 2024-05-21 | 2024-05-28 | 25 | 0d |
| 28 | 6.2 | Создание доменов и пользователей |  | 7d | 2024-05-28 | 2024-06-07 | 27 | 0d |
| 29 | 6.3 | Проверка и настройка работы сети |  | 5d | 2024-06-08 | 2024-06-15 | 28 | 0d |
| 30 | 6.4 | Настройка сети завершена | milestone | 0d | 2024-06-15 | 2024-06-15 | 29 | 0d |
| 31 | 7 | **Обучение персонала** |  | 58d | 2024-06-15 | 2024-09-14 |  | 0d |
| 32 | 7.1 | Принципы работы системы |  | 3d | 2024-06-15 | 2024-06-20 | 30 | 0d |
| 33 | 7.2 | Изучение интерфейса |  | 5d | 2024-06-20 | 2024-06-28 | 32 | 0d |
| 34 | 7.3 | Изучение справочников |  | 20d | 2024-06-28 | 2024-07-30 | 33 | 0d |
| 35 | 7.4 | Изучение документов и журналов |  | 30d | 2024-07-31 | 2024-09-14 | 34 | 0d |
| 36 | 7.5 | Обучение завершено | milestone | 0d | 2024-09-14 | 2024-09-14 | 35 | 0d |
| 37 | 8 | **Передача в эксплуатацию** |  | 8d | 2024-09-16 | 2024-09-27 |  | 0d |
| 38 | 8.1 | Формирование тестовой отчетности |  | 5d | 2024-09-16 | 2024-09-23 | 36 | 0d |
| 39 | 8.2 | Акт ввода в эксплуатацию |  | 3d | 2024-09-23 | 2024-09-27 | 38 | 0d |
| 40 | 8.3 | Передача в эксплуатацию завершена | milestone | 0d | 2024-09-27 | 2024-09-27 | 39 | 0d |
| 41 | 8.4 | Конец проекта | milestone | 0d | 2024-09-27 | 2024-09-27 | 40 | 0d |
