# Внедрение бухгалтерской системы

Schedule from MS Project, 2024-02-12 to 2025-03-04, costs in ₽.

## Calendars

- Стандартный: Mon-Fri 09:00-13:00, 14:00-18:00; Sat-Sun off.

## Resources

| Resource | Rate | Cost per use |
| --- | --- | --- |
| Главбух | 5625 | 300000 |
| Администратор | 4375 | 400000 |
| Программист | 3750 | 500000 |
| Техник | 2500 |  |
| Бухгалтер мат. Учёта1 | 2500 |  |
| Бухгалтер мат. Учёта2 | 2500 |  |
| Бухгалтер учёта ОС и НМА | 2500 |  |
| Бухгалтер учёта ОС | 2500 |  |
| Бухгалтер учёта реализации | 2500 |  |
| Бухгалтер производственного учёта | 2500 |  |
| Компьютер | 1500000 |  |
| Сервер | 150000 |  |
| Принтер | 170000 |  |
| МФУ |  |  |
| Сетевой кабель | 30000 | 150000 |
| Сетевой концентратор |  |  |
| Панель |  | 100000 |
| Разъёмы и розетки |  | 150000 |
| Бухгалтерская система |  | 1000000 |
| Офисный пакет |  | 700000 |
| ОС рабочей станции |  | 600000 |
| Серверная ОС |  | 300000 |
| Интернет |  |  |
| Междугородние переговоры |  |  |

## Schedule

| ID | WBS | Task | Type | Duration | Start | Finish | Predecessors | Total slack | Free slack | Resources | Work | Cost | Вид ресурса |
| --- | --- | --- | --- | --- | --- | --- | --- | --- | --- | --- | --- | --- | --- |
| 1 | 1 | Начало проекта | milestone | 0d | 2024-02-12 | 2024-02-12 |  | 0d |  |  |  |  |  |
| 2 | 2 | **Выбор системы** |  | 44d | 2024-02-12 | 2024-04-11 |  | 0d |  |  | 256h | 3,215,000 |  |
| 3 | 2.1 | Изучение рынка бухгалтерских систем |  | 7d | 2024-02-21 | 2024-02-29 | 1 | 21d |  | Администратор; Интернет [0.1%] | 56h | 660,000 | ТМ |
| 4 | 2.2 | Составление требований к бухгалтерским системам |  | 35d | 2024-02-12 | 2024-03-29 | 1 | 0d |  | Администратор; Главбух [20%] | 112h | 1,020,000 |  |
| 5 | 2.3 | Консультации с фирмами-разработчиками |  | 7d | 2024-04-01 | 2024-04-09 | 3, 4 | 0d |  | Администратор; Междугородние переговоры [0.1%]; Интернет [0.1%] | 56h | 675,000 | ТЗ |
| 6 | 2.4 | Принятие окончательного решения |  | 2d | 2024-04-10 | 2024-04-11 | 5 | 0d |  | Администратор; Главбух | 32h | 860,000 |  |
| 7 | 2.5 | Выбор завершен | milestone | 0d | 2024-04-11 | 2024-04-11 | 6 | 0d |  |  |  |  |  |
| 8 | 3 | **Приобретение программного обеспечения** |  | 71d | 2024-04-12 | 2024-07-19 |  | 161.9d |  |  | 184h | 4,640,000 |  |
| 9 | 3.1 | Заключение договоров |  | 12d | 2024-04-12 | 2024-05-23 | 2 | 161.9d | 0d | Администратор; Главбух; Программист | 144h | 1,860,000 |  |
| 10 | 3.2 | Оплата за ПО |  | 20d | 2024-05-24 | 2024-06-20 | 9 | 161.9d | 0d | Бухгалтерская система; Главбух [10%]; Офисный пакет; ОС рабочей станции; Серверная ОС | 16h | 2,720,000 | ТМ |
| 11 | 3.3 | Оформление ПО на баланс |  | 10d | 2024-07-08 | 2024-07-19 | 10FS+11d | 161.9d | 0d | Бухгалтер учёта ОС и НМА [30%] | 24h | 60,000 |  |
| 12 | 3.4 | Приобретение ПО завершено | milestone | 0d | 2024-07-19 | 2024-07-19 | 11 | 161.9d | 175.95d |  |  |  |  |
| 13 | 4 | **Приобретение компьютеров и сетевого оборудования** |  | 66.95d | 2024-04-12 | 2024-07-15 |  | 0d |  |  | 256h | 21,820,000 |  |
| 14 | 4.1 | Сбор информации о поставщиках и предложениях |  | 14d | 2024-04-12 | 2024-05-01 | 7 | 0d |  | Администратор [50%]; Интернет [0.1%]; Междугородние переговоры [0.1%] | 56h | 470,000 | ТЗ |
| 15 | 4.2 | Анализ и выбор поставщика |  | 25d | 2024-05-02 | 2024-06-05 | 14 | 0d |  | Администратор [50%]; Главбух [20%]; Интернет [0.1%] | 80h | 670,000 | ТЗ |
| 16 | 4.3 | Заключение договоров |  | 10d | 2024-06-06 | 2024-06-19 | 15 | 0d |  | Администратор; Главбух [50%] | 80h | 950,000 |  |
| 17 | 4.4 | Оплата за оборудование |  | 6.67d | 2024-06-20 | 2024-06-28 | 16 | 0d |  | Главбух [30%]; Компьютер [1200%]; Принтер [200%]; Сервер; МФУ [200%]; Сетевой кабель [2000%]; Сетевой концентратор; Панель [500%]; Разъёмы и розетки [1000%] | 16h | 19,670,000 | ТМ |
| 18 | 4.5 | Оформление оборудования на баланс |  | 4.29d | 2024-06-28 | 2024-07-04 | 17 | 0d |  | Бухгалтер учёта ОС [70%] | 24h | 60,000 |  |
| 19 | 4.6 | Приобретение оборудования завершено | milestone | 0d | 2024-07-15 | 2024-07-15 | 18FS+7d | 0d |  | Техник |  |  |  |
| 20 | 5 | **Монтаж локальной сети** |  | 24.95d | 2024-07-15 | 2024-08-19 |  | 0d |  |  | 200h | 500,000 |  |
| 21 | 5.1 | Установка компьютеров на рабочих местах |  | 5d | 2024-07-15 | 2024-07-22 | 19 | 14.95d |  |  |  |  |  |
| 22 | 5.2 | Монтаж кабеля |  | 10d | 2024-07-15 | 2024-07-29 | 19 | 9.95d |  | Техник | 80h | 200,000 |  |
| 23 | 5.3 | Монтаж сетевых устройств |  | 10d | 2024-07-15 | 2024-08-12 | 19 | 0d |  | Техник | 80h | 200,000 |  |
| 24 | 5.4 | Подключение кабеля к компьютерам и сетевым устройствам |  | 5d | 2024-08-12 | 2024-08-19 | 21, 22, 23 | 0d |  | Техник | 40h | 100,000 |  |
| 25 | 5.5 | Монтаж завершён | milestone | 0d | 2024-08-19 | 2024-08-19 | 24 | 0d |  |  |  |  |  |

| ID | WBS | Task | Type | Duration | Start | Finish | Predecessors | Total slack | Resources | Work | Cost |
| --- | --- | --- | --- | --- | --- | --- | --- | --- | --- | --- | --- |
| 26 | 6 | **Установка ПО на компьютеры** |  | 17d | 2024-08-19 | 2024-09-11 |  | 0d |  | 176h | 2,445,000 |
| 27 | 6.1 | Установка сервера |  | 5d | 2024-08-19 | 2024-08-26 | 25 | 0d | Администратор | 40h | 575,000 |
| 28 | 6.2 | Создание доменов и пользователей |  | 7d | 2024-08-26 | 2024-09-04 | 27 | 0d | Администратор | 56h | 645,000 |
| 29 | 6.3 | Проверка и настройка работы сети |  | 5d | 2024-09-04 | 2024-09-11 | 28 | 0d | Администратор; Программист | 80h | 1,225,000 |
| 30 | 6.4 | Настройка сети завершена | milestone | 0d | 2024-09-11 | 2024-09-11 | 29 | 0d |  |  |  |
| 31 | 7 | **Обучение персонала** |  | 116d | 2024-09-11 | 2025-02-20 |  | 0d |  | 3712h | 13,155,000 |
| 32 | 7.1 | Принципы работы системы |  | 6d | 2024-09-11 | 2024-09-19 | 30 | 0d | Администратор [50%]; Программист [50%]; Главбух [50%]; Бухгалтер мат. Учёта1 [50%]; Бухгалтер мат. Учёта2 [50%]; Бухгалтер производственного учёта [50%]; Бухгалтер учёта ОС [50%]; Бухгалтер учёта ОС и НМА [50%] | 192h | 1,230,000 |
| 33 | 7.2 | Изучение интерфейса |  | 10d | 2024-09-19 | 2024-10-03 | 32 | 0d | Главбух [50%]; Бухгалтер мат. Учёта1 [50%]; Бухгалтер мат. Учёта2 [50%]; Бухгалтер учёта ОС [50%]; Бухгалтер учёта ОС и НМА [50%]; Бухгалтер учёта реализации [50%]; Бухгалтер производственного учёта [50%]; Программист [50%] | 320h | 1,375,000 |
| 34 | 7.3 | Изучение справочников |  | 40d | 2024-10-03 | 2024-11-28 | 33 | 0d | Главбух [50%]; Программист [50%]; Бухгалтер мат. Учёта1 [50%]; Бухгалтер мат. Учёта2 [50%]; Бухгалтер учёта ОС [50%]; Бухгалтер учёта ОС и НМА [50%]; Бухгалтер производственного учёта [50%]; Бухгалтер учёта реализации [50%] | 1280h | 4,300,000 |
| 35 | 7.4 | Изучение документов и журналов |  | 60d | 2024-11-28 | 2025-02-20 | 34 | 0d | Бухгалтер мат. Учёта1 [50%]; Бухгалтер мат. Учёта2 [50%]; Бухгалтер производственного учёта [50%]; Бухгалтер учёта ОС [50%]; Бухгалтер учёта ОС и НМА [50%]; Бухгалтер учёта реализации [50%]; Главбух [50%]; Программист [50%] | 1920h | 6,250,000 |
| 36 | 7.5 | Обучение завершено | milestone | 0d | 2025-02-20 | 2025-02-20 | 35 | 0d |  |  |  |
| 37 | 8 | **Передача в эксплуатацию** |  | 8d | 2025-02-20 | 2025-03-04 |  | 0d |  | 168h | 3,040,000 |
| 38 | 8.1 | Формирование тестовой отчетности |  | 5d | 2025-02-20 | 2025-02-27 | 36 | 0d | Администратор; Главбух; Программист | 120h | 1,750,000 |
| 39 | 8.2 | Акт ввода в эксплуатацию |  | 3d | 2025-02-27 | 2025-03-04 | 38 | 0d | Администратор; Главбух | 48h | 940,000 |
| 40 | 8.3 | Передача в эксплуатацию завершена | milestone | 0d | 2025-03-04 | 2025-03-04 | 39 | 0d | Администратор [50%]; Главбух [50%] |  | 350,000 |
| 41 | 8.4 | Конец проекта | milestone | 0d | 2025-03-04 | 2025-03-04 | 40 | 0d |  |  |  |
